# 过程管理体系

Schedule from MS Project, 2002-01-01 to 2002-10-21.
项目进度表
方正集团IT软件事业部

## Calendars

- 标准: Mon-Fri 08:00-12:00, 13:00-17:00; Sat-Sun off. Exceptions (off unless hours are given): 2002-02-11 to 2002-02-15.

## Resources

| Resource |
| --- |
| 产品SA |
| 业务方向SA |
| 产品SA（或SE） |
| 产品经理 |
| 产品部和开发部领导 |
| 事业部老板 |
| 产品总监 |
| 开发经理 |
| 配置管理员 |
| 测试经理 |
| 项目组 |
| 项目估算小组 |
| SCCB |
| 产品/项目经理 |
| 事业部领导 |
| 系统分析员 |
| SA |
| SE |
| 评审人员 |
| 评审人员（包括SCCB） |
| 设计人员 |
| 编码人员 |
| 测试人员 |
| 开发人员 |
| 产品组 |
| 产品部 |
| 配置管理员等 |
| 需求分析小组 |
| 项目经理 |
| 销售 |

## Schedule

| ID | WBS | Task | Type | Duration | Start | Finish | Predecessors | Baseline start | Baseline finish | Baseline duration | Total slack | Free slack | Constraint | Resources | Work |
| --- | --- | --- | --- | --- | --- | --- | --- | --- | --- | --- | --- | --- | --- | --- | --- |
| 3 | 1 | **项目计划** |  | 12d | 2002-01-21 08:00 | 2002-02-05 17:00 |  | 2002-01-04 17:00 | 2002-01-22 17:00 | 12d | 179d |  |  |  | 96h |
| 4 | 1.1 | 制定项目计划书 |  | 11d | 2002-01-21 08:00 | 2002-02-04 17:00 |  | 2002-01-04 17:00 | 2002-01-21 17:00 | 11d | 179d | 0d |  |  | 88h |
| 5 | 1.2 | 项目计划评审 | milestone | 1d | 2002-02-05 08:00 | 2002-02-05 17:00 | 4 | 2002-01-22 08:00 | 2002-01-22 17:00 | 1d | 179d |  |  |  | 8h |
| 7 | 2 | **需求分析** |  | 13d? | 2002-01-01 08:00 | 2002-01-17 17:00 |  | 2002-01-01 08:00 | 2002-01-08 08:00 | 5d | 192d |  |  |  | 64h |
| 8 | 2.1 | 需求调研，获取用户需求 |  | 6d? | 2002-01-01 08:00 | 2002-01-08 17:00 |  |  |  |  | 199d |  | finish no earlier than 2002-01-08 17:00 |  |  |
| 9 | 2.2 | 需求定义，形成软件需求文档 |  | 7d | 2002-01-08 08:00 | 2002-01-16 17:00 |  | 2002-01-01 08:00 | 2002-01-01 08:00 | 0d | 192d | 0d | start no earlier than 2002-01-08 08:00 | 需求分析小组 | 56h |
| 10 | 2.3 | 需求分析说明书评审 |  | 1d | 2002-01-17 08:00 | 2002-01-17 17:00 | 9 | 2002-01-08 08:00 | 2002-01-08 08:00 | 0d | 192d |  |  | 评审人员 | 8h |
| 12 | 3 | **总体设计** |  | 25d | 2002-01-21 08:00 | 2002-03-01 17:00 |  | 2002-01-08 08:00 | 2002-02-18 17:00 | 25d | 90d |  |  |  | 192h |
| 13 | 3.1 | **表现层（或子系统1）系统分析** |  | 6d | 2002-01-21 08:00 | 2002-01-28 17:00 |  | 2002-01-08 08:00 | 2002-01-15 17:00 | 6d | 166d | 0d |  |  | 48h |
| 14 | 3.1.1 | 用例A及其对象与方法 |  | 2d | 2002-01-21 08:00 | 2002-01-22 17:00 |  | 2002-01-08 08:00 | 2002-01-09 17:00 | 2d | 166d | 0d |  | 设计人员 | 16h |
| 15 | 3.1.2 | 用例B及其对象与方法 |  | 2d | 2002-01-23 08:00 | 2002-01-24 17:00 | 14 | 2002-01-10 08:00 | 2002-01-11 17:00 | 2d | 166d | 0d |  | 设计人员 | 16h |
| 16 | 3.1.3 | 用例N及其对象与方法 |  | 2d | 2002-01-25 08:00 | 2002-01-28 17:00 | 15 | 2002-01-14 08:00 | 2002-01-15 17:00 | 2d | 166d |  |  | 设计人员 | 16h |
| 17 | 3.2 | **业务逻辑层（或子系统2）系统分析** |  | 6d | 2002-01-29 08:00 | 2002-02-05 17:00 | 13 | 2002-01-16 08:00 | 2002-01-23 17:00 | 6d | 166d | 0d |  |  | 48h |
| 18 | 3.2.1 | 用例A及其对象与方法 |  | 2d | 2002-01-29 08:00 | 2002-01-30 17:00 |  | 2002-01-16 08:00 | 2002-01-17 17:00 | 2d | 166d | 0d |  | 设计人员 | 16h |
| 19 | 3.2.2 | 用例B及其对象与方法 |  | 2d | 2002-01-31 08:00 | 2002-02-01 17:00 | 18 | 2002-01-18 08:00 | 2002-01-21 17:00 | 2d | 166d | 0d |  | 设计人员 | 16h |
| 20 | 3.2.3 | 用例N及其对象与方法 |  | 2d | 2002-02-04 08:00 | 2002-02-05 17:00 | 19 | 2002-01-22 08:00 | 2002-01-23 17:00 | 2d | 166d |  |  | 设计人员 | 16h |
| 21 | 3.3 | **数据层与数据存储（或子系统n）系统分析** |  | 6d | 2002-02-06 08:00 | 2002-02-20 17:00 | 17 | 2002-01-24 08:00 | 2002-01-31 17:00 | 6d | 166d | 0d |  |  | 48h |
| 22 | 3.3.1 | 用例A及其对象与方法 |  | 2d | 2002-02-06 08:00 | 2002-02-07 17:00 |  | 2002-01-24 08:00 | 2002-01-25 17:00 | 2d | 166d | 0d |  | 设计人员 | 16h |
| 23 | 3.3.2 | 用例B及其对象与方法 |  | 2d | 2002-02-08 08:00 | 2002-02-18 17:00 | 22 | 2002-01-28 08:00 | 2002-01-29 17:00 | 2d | 166d | 0d |  | 设计人员 | 16h |
| 24 | 3.3.3 | 用例N及其对象与方法 |  | 2d | 2002-02-19 08:00 | 2002-02-20 17:00 | 23 | 2002-01-30 08:00 | 2002-01-31 17:00 | 2d | 166d |  |  | 设计人员 | 16h |
| 25 | 3.4 | **系统内部接口分析** |  | 6d | 2002-02-21 08:00 | 2002-02-28 17:00 | 21 | 2002-02-01 08:00 | 2002-02-08 17:00 | 6d | 166d | 0d |  |  | 48h |
| 26 | 3.4.1 | 系统接口1分析与方法设计 |  | 2d | 2002-02-21 08:00 | 2002-02-22 17:00 |  | 2002-02-01 08:00 | 2002-02-04 17:00 | 2d | 166d | 0d |  | 设计人员 | 16h |
| 27 | 3.4.2 | 系统接口2分析与方法设计 |  | 2d | 2002-02-25 08:00 | 2002-02-26 17:00 | 26 | 2002-02-05 08:00 | 2002-02-06 17:00 | 2d | 166d | 0d |  | 设计人员 | 16h |
| 28 | 3.4.3 | 系统接口3分析与方法设计 |  | 2d | 2002-02-27 08:00 | 2002-02-28 17:00 | 27 | 2002-02-07 08:00 | 2002-02-08 17:00 | 2d | 166d |  |  | 设计人员 | 16h |
| 29 | 3.5 | 编写用户手册初稿（可选） |  | 5d | 2002-01-21 08:00 | 2002-01-25 17:00 |  | 2002-01-08 08:00 | 2002-01-14 17:00 | 5d | 90d | 0d |  |  |  |
| 30 | 3.6 | 整理形成总体设计书 | milestone | 0d | 2002-02-28 17:00 | 2002-02-28 17:00 | 25 | 2002-02-08 17:00 | 2002-02-08 17:00 | 0d | 166d | 0d |  | 设计人员 |  |
| 31 | 3.7 | 总体设计评审 | milestone | 1d | 2002-03-01 08:00 | 2002-03-01 17:00 | 30 | 2002-02-18 08:00 | 2002-02-18 17:00 | 1d | 166d |  |  |  |  |

Notes:
- 4: 形成的文档可能有： / �项目计划 / �项目进度表 / �配置管理计划 / �测试计划 / �培训计划 / �风险管理计划
- 22: 或直接描述数据对象所对应的数据库表结构
- 23: 或直接描述数据对象所对应的数据库表结构
- 24: 或直接描述数据对象所对应的数据库表结构

| ID | WBS | Task | Type | Duration | Start | Finish | Predecessors | Baseline start | Baseline finish | Baseline duration | Total slack | Free slack | Resources | Work | Text1 |
| --- | --- | --- | --- | --- | --- | --- | --- | --- | --- | --- | --- | --- | --- | --- | --- |
| 33 | 4 | **详细设计** |  | 42d | 2002-01-28 08:00 | 2002-04-02 17:00 | 29 | 2002-01-15 08:00 | 2002-03-20 17:00 | 42d | 90d | 0d |  | 320h |  |
| 34 | 4.1 | **表现层（或子系统1）详细设计** |  | 9d | 2002-01-28 08:00 | 2002-02-07 17:00 |  | 2002-01-15 08:00 | 2002-01-25 17:00 | 9d | 90d | 0d |  | 72h |  |
| 35 | 4.1.1 | 用例A对象与方法设计 |  | 3d | 2002-01-28 08:00 | 2002-01-30 17:00 |  | 2002-01-15 08:00 | 2002-01-17 17:00 | 3d | 90d | 0d | 设计人员 | 24h |  |
| 36 | 4.1.2 | 用例B对象与方法设计 |  | 3d | 2002-01-31 08:00 | 2002-02-04 17:00 | 35 | 2002-01-18 08:00 | 2002-01-22 17:00 | 3d | 90d | 0d | 设计人员 | 24h |  |
| 37 | 4.1.3 | 用例N对象与方法设计 |  | 3d | 2002-02-05 08:00 | 2002-02-07 17:00 | 36 | 2002-01-23 08:00 | 2002-01-25 17:00 | 3d | 90d |  | 设计人员 | 24h |  |
| 38 | 4.2 | **业务逻辑层（或子系统2）详细设计** |  | 9d | 2002-02-08 08:00 | 2002-02-27 17:00 | 34 | 2002-01-28 08:00 | 2002-02-07 17:00 | 9d | 90d | 0d |  | 72h |  |
| 39 | 4.2.1 | 用例A对象与方法设计 |  | 3d | 2002-02-08 08:00 | 2002-02-19 17:00 |  | 2002-01-28 08:00 | 2002-01-30 17:00 | 3d | 90d | 0d | 设计人员 | 24h |  |
| 40 | 4.2.2 | 用例B对象与方法设计 |  | 3d | 2002-02-20 08:00 | 2002-02-22 17:00 | 39 | 2002-01-31 08:00 | 2002-02-04 17:00 | 3d | 90d | 0d | 设计人员 | 24h |  |
| 41 | 4.2.3 | 用例N对象与方法设计 |  | 3d | 2002-02-25 08:00 | 2002-02-27 17:00 | 40 | 2002-02-05 08:00 | 2002-02-07 17:00 | 3d | 90d |  | 设计人员 | 24h |  |
| 42 | 4.3 | **数据层与数据存储（或子系统n）详细设计** |  | 9d | 2002-02-28 08:00 | 2002-03-12 17:00 | 38 | 2002-02-08 08:00 | 2002-02-27 17:00 | 9d | 90d | 0d |  | 72h |  |
| 43 | 4.3.1 | 用例A对象与方法设计 |  | 3d | 2002-02-28 08:00 | 2002-03-04 17:00 |  | 2002-02-08 08:00 | 2002-02-19 17:00 | 3d | 90d | 0d | 设计人员 | 24h |  |
| 44 | 4.3.2 | 用例B对象与方法设计 |  | 3d | 2002-03-05 08:00 | 2002-03-07 17:00 | 43 | 2002-02-20 08:00 | 2002-02-22 17:00 | 3d | 90d | 0d | 设计人员 | 24h |  |
| 45 | 4.3.3 | 用例N对象与方法设计 |  | 3d | 2002-03-08 08:00 | 2002-03-12 17:00 | 44 | 2002-02-25 08:00 | 2002-02-27 17:00 | 3d | 90d |  | 设计人员 | 24h |  |
| 46 | 4.4 | **系统内部接口分析** |  | 9d | 2002-03-13 08:00 | 2002-03-25 17:00 | 42 | 2002-02-28 08:00 | 2002-03-12 17:00 | 9d | 90d | 0d |  | 72h |  |
| 47 | 4.4.1 | 系统接口1的虚拟函数实现 |  | 3d | 2002-03-13 08:00 | 2002-03-15 17:00 |  | 2002-02-28 08:00 | 2002-03-04 17:00 | 3d | 90d | 0d | 设计人员 | 24h |  |
| 48 | 4.4.2 | 系统接口2的虚拟函数实现 |  | 3d | 2002-03-18 08:00 | 2002-03-20 17:00 | 47 | 2002-03-05 08:00 | 2002-03-07 17:00 | 3d | 90d | 0d | 设计人员 | 24h |  |
| 49 | 4.4.3 | 系统接口n的虚拟函数实现 |  | 3d | 2002-03-21 08:00 | 2002-03-25 17:00 | 48 | 2002-03-08 08:00 | 2002-03-12 17:00 | 3d | 90d |  | 设计人员 | 24h |  |
| 50 | 4.5 | 整理形成详细设计书 |  | 4d | 2002-03-26 08:00 | 2002-03-29 17:00 | 46 | 2002-03-13 08:00 | 2002-03-18 17:00 | 4d | 90d | 0d | 设计人员 | 32h |  |
| 51 | 4.6 | 详细设计评审 | milestone | 2d | 2002-04-01 08:00 | 2002-04-02 17:00 | 50 | 2002-03-19 08:00 | 2002-03-20 17:00 | 2d | 90d |  |  |  |  |
| 53 | 5 | **编码与单元测试** |  | 32d | 2002-04-03 08:00 | 2002-05-16 17:00 | 33 | 2002-03-21 08:00 | 2002-05-03 17:00 | 32d | 90d | 0d |  | 840h |  |
| 54 | 5.1 | **表现层（或子系统1）实现** |  | 30d | 2002-04-03 08:00 | 2002-05-14 17:00 |  | 2002-03-21 08:00 | 2002-05-01 17:00 | 30d | 92d |  |  | 240h | 12 |
| 55 | 5.1.1 | 用例A编码 |  | 5d | 2002-04-03 08:00 | 2002-04-09 17:00 |  | 2002-03-21 08:00 | 2002-03-27 17:00 | 5d | 92d | 0d | 编码人员 | 40h |  |
| 56 | 5.1.2 | 用例A单元测试 |  | 5d | 2002-04-10 08:00 | 2002-04-16 17:00 | 55 | 2002-03-28 08:00 | 2002-04-03 17:00 | 5d | 92d | 0d | 编码人员 | 40h |  |
| 57 | 5.1.3 | 用例B编码 |  | 5d | 2002-04-17 08:00 | 2002-04-23 17:00 | 56 | 2002-04-04 08:00 | 2002-04-10 17:00 | 5d | 92d | 0d | 编码人员 | 40h |  |
| 58 | 5.1.4 | 用例B单元测试 |  | 5d | 2002-04-24 08:00 | 2002-04-30 17:00 | 57 | 2002-04-11 08:00 | 2002-04-17 17:00 | 5d | 92d | 0d | 编码人员 | 40h |  |
| 59 | 5.1.5 | 用例N编码 |  | 5d | 2002-05-01 08:00 | 2002-05-07 17:00 | 58 | 2002-04-18 08:00 | 2002-04-24 17:00 | 5d | 92d | 0d | 编码人员 | 40h |  |
| 60 | 5.1.6 | 用例N单元测试 |  | 5d | 2002-05-08 08:00 | 2002-05-14 17:00 | 59 | 2002-04-25 08:00 | 2002-05-01 17:00 | 5d | 92d |  | 编码人员 | 40h |  |

Notes:
- 35: 每个函数的参数及函数内部的概要逻辑设计。 / 对象的存储结构和生命周期的逻辑实现。 / ……
- 36: 每个函数的参数及函数内部的概要逻辑设计。 / 对象的存储结构和生命周期的逻辑实现。 / ……
- 37: 每个函数的参数及函数内部的概要逻辑设计。 / 对象的存储结构和生命周期的逻辑实现。 / ……
- 39: 每个函数的参数及函数内部的概要逻辑设计。 / 对象的存储结构和生命周期的逻辑实现。 / ……
- 40: 每个函数的参数及函数内部的概要逻辑设计。 / 对象的存储结构和生命周期的逻辑实现。 / ……
- 41: 每个函数的参数及函数内部的概要逻辑设计。 / 对象的存储结构和生命周期的逻辑实现。 / ……
- 43: 每个函数的参数及函数内部的概要逻辑设计。 / 对象的存储结构和生命周期的逻辑实现。 / ……
- 44: 每个函数的参数及函数内部的概要逻辑设计。 / 对象的存储结构和生命周期的逻辑实现。 / ……
- 45: 每个函数的参数及函数内部的概要逻辑设计。 / 对象的存储结构和生命周期的逻辑实现。 / ……
- 56: 包括代码修改和单元测试记录文档的工作量
- 58: 包括代码修改和单元测试记录文档的工作量
- 60: 包括代码修改和单元测试记录文档的工作量

| ID | WBS | Task | Type | Duration | Start | Finish | Predecessors | Baseline start | Baseline finish | Baseline duration | Total slack | Free slack | Resources | Work | Text1 |
| --- | --- | --- | --- | --- | --- | --- | --- | --- | --- | --- | --- | --- | --- | --- | --- |
| 61 | 5.2 | **业务逻辑层（或子系统2）实现** |  | 30d | 2002-04-03 08:00 | 2002-05-14 17:00 |  | 2002-03-21 08:00 | 2002-05-01 17:00 | 30d | 92d |  |  | 240h | 11 |
| 62 | 5.2.1 | 用例A编码 |  | 5d | 2002-04-03 08:00 | 2002-04-09 17:00 |  | 2002-03-21 08:00 | 2002-03-27 17:00 | 5d | 92d | 0d | 编码人员 | 40h |  |
| 63 | 5.2.2 | 用例A单元测试 |  | 5d | 2002-04-10 08:00 | 2002-04-16 17:00 | 62 | 2002-03-28 08:00 | 2002-04-03 17:00 | 5d | 92d | 0d | 编码人员 | 40h |  |
| 64 | 5.2.3 | 用例B编码 |  | 5d | 2002-04-17 08:00 | 2002-04-23 17:00 | 63 | 2002-04-04 08:00 | 2002-04-10 17:00 | 5d | 92d | 0d | 编码人员 | 40h |  |
| 65 | 5.2.4 | 用例B单元测试 |  | 5d | 2002-04-24 08:00 | 2002-04-30 17:00 | 64 | 2002-04-11 08:00 | 2002-04-17 17:00 | 5d | 92d | 0d | 编码人员 | 40h |  |
| 66 | 5.2.5 | 用例N编码 |  | 5d | 2002-05-01 08:00 | 2002-05-07 17:00 | 65 | 2002-04-18 08:00 | 2002-04-24 17:00 | 5d | 92d | 0d | 编码人员 | 40h |  |
| 67 | 5.2.6 | 用例N单元测试 |  | 5d | 2002-05-08 08:00 | 2002-05-14 17:00 | 66 | 2002-04-25 08:00 | 2002-05-01 17:00 | 5d | 92d |  | 编码人员 | 40h |  |
| 68 | 5.3 | **数据层与数据存储（或子系统n）实现** |  | 30d | 2002-04-03 08:00 | 2002-05-14 17:00 |  | 2002-03-21 08:00 | 2002-05-01 17:00 | 30d | 90d | 0d |  | 240h |  |
| 69 | 5.3.1 | 用例A编码 |  | 5d | 2002-04-03 08:00 | 2002-04-09 17:00 |  | 2002-03-21 08:00 | 2002-03-27 17:00 | 5d | 90d | 0d | 编码人员 | 40h |  |
| 70 | 5.3.2 | 用例A单元测试 |  | 5d | 2002-04-10 08:00 | 2002-04-16 17:00 | 69 | 2002-03-28 08:00 | 2002-04-03 17:00 | 5d | 90d | 0d | 编码人员 | 40h |  |
| 71 | 5.3.3 | 用例B编码 |  | 5d | 2002-04-17 08:00 | 2002-04-23 17:00 | 70 | 2002-04-04 08:00 | 2002-04-10 17:00 | 5d | 90d | 0d | 编码人员 | 40h |  |
| 72 | 5.3.4 | 用例B单元测试 |  | 5d | 2002-04-24 08:00 | 2002-04-30 17:00 | 71 | 2002-04-11 08:00 | 2002-04-17 17:00 | 5d | 90d | 0d | 编码人员 | 40h |  |
| 73 | 5.3.5 | 用例N编码 |  | 5d | 2002-05-01 08:00 | 2002-05-07 17:00 | 72 | 2002-04-18 08:00 | 2002-04-24 17:00 | 5d | 90d | 0d | 编码人员 | 40h |  |
| 74 | 5.3.6 | 用例N单元测试 |  | 5d | 2002-05-08 08:00 | 2002-05-14 17:00 | 73 | 2002-04-25 08:00 | 2002-05-01 17:00 | 5d | 90d |  | 编码人员 | 40h |  |
| 75 | 5.4 | **系统外部接口实现** |  | 15d | 2002-04-03 08:00 | 2002-04-23 17:00 |  | 2002-03-21 08:00 | 2002-04-10 17:00 | 15d | 107d |  |  | 120h |  |
| 76 | 5.4.1 | 系统接口1的测试函数实现 |  | 5d | 2002-04-03 08:00 | 2002-04-09 17:00 |  | 2002-03-21 08:00 | 2002-03-27 17:00 | 5d | 107d | 0d | 编码人员 | 40h |  |
| 77 | 5.4.2 | 系统接口2的测试函数实现 |  | 5d | 2002-04-10 08:00 | 2002-04-16 17:00 | 76 | 2002-03-28 08:00 | 2002-04-03 17:00 | 5d | 107d | 0d | 编码人员 | 40h |  |
| 78 | 5.4.3 | 系统接口n的测试函数实现 |  | 5d | 2002-04-17 08:00 | 2002-04-23 17:00 | 77 | 2002-04-04 08:00 | 2002-04-10 17:00 | 5d | 107d |  | 编码人员 | 40h |  |
| 79 | 5.5 | **代码走查** |  | 2d | 2002-04-03 08:00 | 2002-04-04 17:00 |  | 2002-03-21 08:00 | 2002-03-22 17:00 | 2d | 119d | 0d |  |  |  |
| 80 | 5.5.1 | 代码走查1 |  | 2d | 2002-04-03 08:00 | 2002-04-04 17:00 |  | 2002-03-21 08:00 | 2002-03-22 17:00 | 2d | 119d |  |  |  |  |
| 81 | 5.5.2 | 代码走查2 |  | 2d | 2002-04-03 08:00 | 2002-04-04 17:00 |  | 2002-03-21 08:00 | 2002-03-22 17:00 | 2d | 119d |  |  |  |  |
| 82 | 5.5.3 | 代码走查n |  | 2d | 2002-04-03 08:00 | 2002-04-04 17:00 |  | 2002-03-21 08:00 | 2002-03-22 17:00 | 2d | 119d |  |  |  |  |
| 83 | 5.6 | 整理源代码、单元测试、走查文档 | milestone | 0d | 2002-05-14 17:00 | 2002-05-14 17:00 | 68 | 2002-05-01 17:00 | 2002-05-01 17:00 | 0d | 90d | 0d | 编码人员 |  |  |
| 84 | 5.7 | 填写《单元测试总结报告》 |  | 2d | 2002-05-15 08:00 | 2002-05-16 17:00 | 83 | 2002-05-02 08:00 | 2002-05-03 17:00 | 2d | 90d |  |  |  |  |
| 85 | 5.8 | 填写《走查结果总结》 |  | 1d | 2002-04-05 08:00 | 2002-04-05 17:00 | 79 | 2002-03-25 08:00 | 2002-03-25 17:00 | 1d | 119d |  |  |  |  |

Notes:
- 63: 包括代码修改和单元测试记录文档的工作量
- 65: 包括代码修改和单元测试记录文档的工作量
- 67: 包括代码修改和单元测试记录文档的工作量
- 70: 包括代码修改和单元测试记录文档的工作量
- 72: 包括代码修改和单元测试记录文档的工作量
- 74: 包括代码修改和单元测试记录文档的工作量

| ID | WBS | Task | Type | Duration | Start | Finish | Predecessors | Baseline start | Baseline finish | Baseline duration | Total slack | Free slack | Constraint | Resources | Work |
| --- | --- | --- | --- | --- | --- | --- | --- | --- | --- | --- | --- | --- | --- | --- | --- |
| 87 | 6 | **集成测试** |  | 13d | 2002-05-16 17:00 | 2002-06-04 17:00 | 53 | 2002-05-03 17:00 | 2002-05-22 17:00 | 13d | 90d |  |  |  | 80h |
| 88 | 6.1 | 系统功能审核 |  | 10d | 2002-05-17 08:00 | 2002-05-30 17:00 |  | 2002-05-06 08:00 | 2002-05-17 17:00 | 10d | 102d |  |  | 需求分析小组 | 80h |
| 89 | 6.2 | 核心模块（或主要子系统）集成测试与改进 |  | 8d | 2002-05-16 17:00 | 2002-05-28 17:00 |  | 2002-05-03 17:00 | 2002-05-15 17:00 | 8d | 90d | 0d |  | 测试人员; 开发人员 |  |
| 90 | 6.3 | 功能组1（或子系统1）的集成测试与改进 |  | 5d | 2002-05-28 17:00 | 2002-06-04 17:00 | 89 | 2002-05-15 17:00 | 2002-05-22 17:00 | 5d | 90d | 0d |  | 测试人员; 开发人员 |  |
| 91 | 6.4 | 功能组2（或子系统2）的集成测试与改进 |  | 5d | 2002-05-28 17:00 | 2002-06-04 17:00 | 89 | 2002-05-15 17:00 | 2002-05-22 17:00 | 5d | 90d | 0d |  | 测试人员; 开发人员 |  |
| 92 | 6.5 | 功能组N（或子系统N）的集成测试与改进 |  | 5d | 2002-05-28 17:00 | 2002-06-04 17:00 | 89 | 2002-05-15 17:00 | 2002-05-22 17:00 | 5d | 90d | 0d |  | 测试人员; 开发人员 |  |
| 93 | 6.6 | 系统与外部接口的集成测试与改进 |  | 5d | 2002-05-28 17:00 | 2002-06-04 17:00 | 89 | 2002-05-15 17:00 | 2002-05-22 17:00 | 5d | 99d |  |  | 测试人员; 开发人员 |  |
| 94 | 6.7 | 提交系统测试申请 | milestone | 0d | 2002-06-04 17:00 | 2002-06-04 17:00 | 92, 90, 91 | 2002-05-22 17:00 | 2002-05-22 17:00 | 0d | 90d | 0d |  | 项目经理; 测试经理 |  |
| 95 | 6.8 | 整理源代码和集成测试文档 | milestone | 0d | 2002-06-04 17:00 | 2002-06-04 17:00 | 94 | 2002-05-22 17:00 | 2002-05-22 17:00 | 0d | 99d |  |  | 测试人员; 开发人员 |  |
| 97 | 7 | **系统测试** |  | 50d | 2002-06-04 17:00 | 2002-08-14 08:00 | 94 | 2002-05-22 17:00 | 2002-08-14 08:00 | 59d | 45d |  |  |  |  |
| 98 | 7.1 | 系统测试任务1 | milestone | 0d | 2002-06-04 17:00 | 2002-06-04 17:00 |  | 2002-05-22 17:00 | 2002-05-22 17:00 | 0d | 95d |  |  | 测试人员 |  |
| 99 | 7.2 | 系统测试任务2 |  | 5d | 2002-06-05 08:00 | 2002-06-11 17:00 |  | 2002-05-23 08:00 | 2002-05-29 17:00 | 5d | 90d |  |  |  |  |
| 100 | 7.3 | 系统测试任务n |  | 5d | 2002-06-05 08:00 | 2002-06-11 17:00 |  | 2002-05-23 08:00 | 2002-05-29 17:00 | 5d | 90d |  |  |  |  |
| 101 | 7.4 | 修复Bug | milestone | 0d | 2002-06-04 17:00 | 2002-06-04 17:00 |  | 2002-05-22 17:00 | 2002-05-22 17:00 | 0d | 95d | 50d |  | 开发人员 |  |
| 102 | 7.5 | 完成用户手册（编写或修改） | milestone | 0d | 2002-06-04 17:00 | 2002-06-04 17:00 |  | 2002-05-22 17:00 | 2002-05-22 17:00 | 0d | 95d | 50d |  | 需求分析小组 |  |
| 103 | 7.6 | 稳定测试 | milestone | 0d | 2002-08-14 08:00 | 2002-08-14 08:00 | 101 | 2002-08-14 08:00 | 2002-08-14 08:00 | 0d | 45d | 0d | start no earlier than 2002-08-14 08:00 | 测试人员 |  |
| 104 | 7.7 | 编写测试综合报告 | milestone | 0d | 2002-08-14 08:00 | 2002-08-14 08:00 | 103 | 2002-08-14 08:00 | 2002-08-14 08:00 | 0d | 45d |  |  | 测试经理 |  |
| 105 | 7.8 | 整理代码和所有技术文档 | milestone | 0d | 2002-08-14 08:00 | 2002-08-14 08:00 | 102, 101, 103 | 2002-08-14 08:00 | 2002-08-14 08:00 | 0d | 45d |  |  | 项目经理 |  |
| 107 | 8 | **系统安装** |  | 3d? | 2002-08-15 08:00 | 2002-08-19 17:00 |  | 2002-08-15 08:00 | 2002-08-19 17:00 | 3d? | 41d |  |  | 销售 | 40h |
| 108 | 8.1 | 安装准备 |  | 2d? | 2002-08-15 08:00 | 2002-08-16 17:00 |  | 2002-08-15 08:00 | 2002-08-16 17:00 | 2d? | 41d | 0d | finish no earlier than 2002-08-16 17:00 | 需求分析小组 | 16h |
| 109 | 8.2 | 安装调试 |  | 1d? | 2002-08-19 08:00 | 2002-08-19 17:00 | 108 | 2002-08-19 08:00 | 2002-08-19 17:00 | 1d? | 41d |  | start no earlier than 2002-08-19 08:00 |  |  |
| 111 | 9 | **试运行** |  | 38d? | 2002-08-20 08:00 | 2002-10-10 17:00 |  | 2002-08-20 08:00 | 2002-10-10 17:00 | 38d? | 7d |  |  |  |  |
| 112 | 9.1 | 修复bug |  | 1d? | 2002-08-20 08:00 | 2002-08-20 17:00 |  | 2002-08-20 08:00 | 2002-08-20 17:00 | 1d? | 44d |  | start no earlier than 2002-08-20 08:00 |  |  |
| 113 | 9.2 | 组织再次测试 |  | 3d? | 2002-10-08 08:00 | 2002-10-10 17:00 |  | 2002-10-08 08:00 | 2002-10-10 17:00 | 3d? | 7d |  | finish no earlier than 2002-10-10 17:00 |  |  |

| ID | WBS | Task | Duration | Start | Finish | Predecessors | Baseline start | Baseline finish | Baseline duration | Total slack | Free slack | Constraint | Resources | Work |
| --- | --- | --- | --- | --- | --- | --- | --- | --- | --- | --- | --- | --- | --- | --- |
| 115 | 10 | **系统验收** | 1d? | 2002-10-15 08:00 | 2002-10-15 17:00 |  | 2002-10-15 08:00 | 2002-10-15 17:00 | 1d? | 4d |  |  |  |  |
| 116 | 10.1 | 系统验收任务1 | 1d? | 2002-10-15 08:00 | 2002-10-15 17:00 |  | 2002-10-15 08:00 | 2002-10-15 17:00 | 1d? | 4d |  | start no earlier than 2002-10-15 08:00 |  |  |
| 118 | 11 | **项目结项与维护计划** | 4d | 2002-10-16 08:00 | 2002-10-21 17:00 |  | 2002-10-16 08:00 | 2002-10-21 17:00 | 4d | 0d |  |  |  | 24h |
| 119 | 11.1 | 编写结项总结报告（包括维护计划） | 3d | 2002-10-16 08:00 | 2002-10-18 17:00 | 97, 107 | 2002-10-16 08:00 | 2002-10-18 17:00 | 3d | 0d |  | finish no earlier than 2002-10-18 17:00 | 项目组 | 24h |
| 120 | 11.2 | 结项总结评审 | 1d | 2002-10-21 08:00 | 2002-10-21 17:00 | 119 | 2002-10-21 08:00 | 2002-10-21 17:00 | 1d | 0d |  |  |  |  |
| 122 | 12 | **项目组培训活动** | 2d? | 2002-08-15 08:00 | 2002-08-16 17:00 |  | 2002-08-15 08:00 | 2002-08-16 17:00 | 2d? | 46d |  |  |  |  |
| 123 | 12.1 | 培训1 | 1d? | 2002-08-15 08:00 | 2002-08-15 17:00 |  | 2002-08-15 08:00 | 2002-08-15 17:00 | 1d? | 46d | 0d | start no earlier than 2002-08-15 08:00 |  |  |
| 124 | 12.2 | 培训n | 1d? | 2002-08-16 08:00 | 2002-08-16 17:00 | 123 | 2002-08-16 08:00 | 2002-08-16 17:00 | 1d? | 46d |  |  |  |  |
| 126 | 13 | **项目例会** | 196d | 2002-01-04 08:00 | 2002-10-11 17:00 |  | 2002-01-04 08:00 | 2002-10-11 17:00 | 196d | 6d |  |  | 项目组 | 1568h |
| 127 | 13.1 | 项目例会 1 | 0.5d | 2002-01-04 08:00 | 2002-01-04 12:00 |  | 2002-01-04 08:00 | 2002-01-04 12:00 | 0.5d | 201.5d |  | start no earlier than 2002-01-04 08:00 |  |  |
| 128 | 13.2 | 项目例会 2 | 0.5d | 2002-01-11 08:00 | 2002-01-11 12:00 |  | 2002-01-11 08:00 | 2002-01-11 12:00 | 0.5d | 196.5d |  | start no earlier than 2002-01-11 08:00 |  |  |
| 129 | 13.3 | 项目例会 3 | 0.5d | 2002-01-18 08:00 | 2002-01-18 12:00 |  | 2002-01-18 08:00 | 2002-01-18 12:00 | 0.5d | 191.5d |  | start no earlier than 2002-01-18 08:00 |  |  |
| 130 | 13.4 | 项目例会 4 | 0.5d | 2002-01-25 08:00 | 2002-01-25 12:00 |  | 2002-01-25 08:00 | 2002-01-25 12:00 | 0.5d | 186.5d |  | start no earlier than 2002-01-25 08:00 |  |  |
| 131 | 13.5 | 项目例会 5 | 0.5d | 2002-02-01 08:00 | 2002-02-01 12:00 |  | 2002-02-01 08:00 | 2002-02-01 12:00 | 0.5d | 181.5d |  | start no earlier than 2002-02-01 08:00 |  |  |
| 132 | 13.6 | 项目例会 6 | 1d | 2002-02-08 08:00 | 2002-02-08 17:00 |  | 2002-02-08 08:00 | 2002-02-08 17:00 | 1d | 176d |  | start no earlier than 2002-02-08 08:00 |  |  |
| 133 | 13.7 | 项目例会 7 | 1d | 2002-02-18 08:00 | 2002-02-18 17:00 |  | 2002-02-18 08:00 | 2002-02-18 17:00 | 1d | 175d |  | start no earlier than 2002-02-15 08:00 |  |  |
| 134 | 13.8 | 项目例会 8 | 1d | 2002-02-22 08:00 | 2002-02-22 17:00 |  | 2002-02-22 08:00 | 2002-02-22 17:00 | 1d | 171d |  | start no earlier than 2002-02-22 08:00 |  |  |
| 135 | 13.9 | 项目例会 9 | 1d | 2002-03-01 08:00 | 2002-03-01 17:00 |  | 2002-03-01 08:00 | 2002-03-01 17:00 | 1d | 166d |  | start no earlier than 2002-03-01 08:00 |  |  |
| 136 | 13.10 | 项目例会 10 | 1d | 2002-03-08 08:00 | 2002-03-08 17:00 |  | 2002-03-08 08:00 | 2002-03-08 17:00 | 1d | 161d |  | start no earlier than 2002-03-08 08:00 |  |  |
| 137 | 13.11 | 项目例会 11 | 1d | 2002-03-15 08:00 | 2002-03-15 17:00 |  | 2002-03-15 08:00 | 2002-03-15 17:00 | 1d | 156d |  | start no earlier than 2002-03-15 08:00 |  |  |
| 138 | 13.12 | 项目例会 12 | 1d | 2002-03-22 08:00 | 2002-03-22 17:00 |  | 2002-03-22 08:00 | 2002-03-22 17:00 | 1d | 151d |  | start no earlier than 2002-03-22 08:00 |  |  |
| 139 | 13.13 | 项目例会 13 | 1d | 2002-03-29 08:00 | 2002-03-29 17:00 |  | 2002-03-29 08:00 | 2002-03-29 17:00 | 1d | 146d |  | start no earlier than 2002-03-29 08:00 |  |  |
| 140 | 13.14 | 项目例会 14 | 1d | 2002-04-05 08:00 | 2002-04-05 17:00 |  | 2002-04-05 08:00 | 2002-04-05 17:00 | 1d | 141d |  | start no earlier than 2002-04-05 08:00 |  |  |
| 141 | 13.15 | 项目例会 15 | 1d | 2002-04-12 08:00 | 2002-04-12 17:00 |  | 2002-04-12 08:00 | 2002-04-12 17:00 | 1d | 136d |  | start no earlier than 2002-04-12 08:00 |  |  |
| 142 | 13.16 | 项目例会 16 | 1d | 2002-04-19 08:00 | 2002-04-19 17:00 |  | 2002-04-19 08:00 | 2002-04-19 17:00 | 1d | 131d |  | start no earlier than 2002-04-19 08:00 |  |  |
| 143 | 13.17 | 项目例会 17 | 1d | 2002-04-26 08:00 | 2002-04-26 17:00 |  | 2002-04-26 08:00 | 2002-04-26 17:00 | 1d | 126d |  | start no earlier than 2002-04-26 08:00 |  |  |
| 144 | 13.18 | 项目例会 18 | 1d | 2002-05-03 08:00 | 2002-05-03 17:00 |  | 2002-05-03 08:00 | 2002-05-03 17:00 | 1d | 121d |  | start no earlier than 2002-05-03 08:00 |  |  |
| 145 | 13.19 | 项目例会 19 | 1d | 2002-05-10 08:00 | 2002-05-10 17:00 |  | 2002-05-10 08:00 | 2002-05-10 17:00 | 1d | 116d |  | start no earlier than 2002-05-10 08:00 |  |  |
| 146 | 13.20 | 项目例会 20 | 1d | 2002-05-17 08:00 | 2002-05-17 17:00 |  | 2002-05-17 08:00 | 2002-05-17 17:00 | 1d | 111d |  | start no earlier than 2002-05-17 08:00 |  |  |
| 147 | 13.21 | 项目例会 21 | 1d | 2002-05-24 08:00 | 2002-05-24 17:00 |  | 2002-05-24 08:00 | 2002-05-24 17:00 | 1d | 106d |  | start no earlier than 2002-05-24 08:00 |  |  |
| 148 | 13.22 | 项目例会 22 | 1d | 2002-05-31 08:00 | 2002-05-31 17:00 |  | 2002-05-31 08:00 | 2002-05-31 17:00 | 1d | 101d |  | start no earlier than 2002-05-31 08:00 |  |  |
| 149 | 13.23 | 项目例会 23 | 1d | 2002-06-07 08:00 | 2002-06-07 17:00 |  | 2002-06-07 08:00 | 2002-06-07 17:00 | 1d | 96d |  | start no earlier than 2002-06-07 08:00 |  |  |
| 150 | 13.24 | 项目例会 24 | 1d | 2002-06-14 08:00 | 2002-06-14 17:00 |  | 2002-06-14 08:00 | 2002-06-14 17:00 | 1d | 91d |  | start no earlier than 2002-06-14 08:00 |  |  |
| 151 | 13.25 | 项目例会 25 | 1d | 2002-06-21 08:00 | 2002-06-21 17:00 |  | 2002-06-21 08:00 | 2002-06-21 17:00 | 1d | 86d |  | start no earlier than 2002-06-21 08:00 |  |  |
| 152 | 13.26 | 项目例会 26 | 1d | 2002-06-28 08:00 | 2002-06-28 17:00 |  | 2002-06-28 08:00 | 2002-06-28 17:00 | 1d | 81d |  | start no earlier than 2002-06-28 08:00 |  |  |
| 153 | 13.27 | 项目例会 27 | 1d | 2002-07-05 08:00 | 2002-07-05 17:00 |  | 2002-07-05 08:00 | 2002-07-05 17:00 | 1d | 76d |  | start no earlier than 2002-07-05 08:00 |  |  |
| 154 | 13.28 | 项目例会 28 | 1d | 2002-07-12 08:00 | 2002-07-12 17:00 |  | 2002-07-12 08:00 | 2002-07-12 17:00 | 1d | 71d |  | start no earlier than 2002-07-12 08:00 |  |  |
| 155 | 13.29 | 项目例会 29 | 1d | 2002-07-19 08:00 | 2002-07-19 17:00 |  | 2002-07-19 08:00 | 2002-07-19 17:00 | 1d | 66d |  | start no earlier than 2002-07-19 08:00 |  |  |
| 156 | 13.30 | 项目例会 30 | 1d | 2002-07-26 08:00 | 2002-07-26 17:00 |  | 2002-07-26 08:00 | 2002-07-26 17:00 | 1d | 61d |  | start no earlier than 2002-07-26 08:00 |  |  |
| 157 | 13.31 | 项目例会 31 | 1d | 2002-08-02 08:00 | 2002-08-02 17:00 |  | 2002-08-02 08:00 | 2002-08-02 17:00 | 1d | 56d |  | start no earlier than 2002-08-02 08:00 |  |  |
| 158 | 13.32 | 项目例会 32 | 1d | 2002-08-09 08:00 | 2002-08-09 17:00 |  | 2002-08-09 08:00 | 2002-08-09 17:00 | 1d | 51d |  | start no earlier than 2002-08-09 08:00 |  |  |
| 159 | 13.33 | 项目例会 33 | 1d | 2002-08-16 08:00 | 2002-08-16 17:00 |  | 2002-08-16 08:00 | 2002-08-16 17:00 | 1d | 46d |  | start no earlier than 2002-08-16 08:00 |  |  |
| 160 | 13.34 | 项目例会 34 | 1d | 2002-08-23 08:00 | 2002-08-23 17:00 |  | 2002-08-23 08:00 | 2002-08-23 17:00 | 1d | 41d |  | start no earlier than 2002-08-23 08:00 |  |  |
| 161 | 13.35 | 项目例会 35 | 1d | 2002-08-30 08:00 | 2002-08-30 17:00 |  | 2002-08-30 08:00 | 2002-08-30 17:00 | 1d | 36d |  | start no earlier than 2002-08-30 08:00 |  |  |
| 162 | 13.36 | 项目例会 36 | 1d | 2002-09-06 08:00 | 2002-09-06 17:00 |  | 2002-09-06 08:00 | 2002-09-06 17:00 | 1d | 31d |  | start no earlier than 2002-09-06 08:00 |  |  |
| 163 | 13.37 | 项目例会 37 | 1d | 2002-09-13 08:00 | 2002-09-13 17:00 |  | 2002-09-13 08:00 | 2002-09-13 17:00 | 1d | 26d |  | start no earlier than 2002-09-13 08:00 |  |  |
| 164 | 13.38 | 项目例会 38 | 1d | 2002-09-20 08:00 | 2002-09-20 17:00 |  | 2002-09-20 08:00 | 2002-09-20 17:00 | 1d | 21d |  | start no earlier than 2002-09-20 08:00 |  |  |
| 165 | 13.39 | 项目例会 39 | 1d | 2002-09-27 08:00 | 2002-09-27 17:00 |  | 2002-09-27 08:00 | 2002-09-27 17:00 | 1d | 16d |  | start no earlier than 2002-09-27 08:00 |  |  |
| 166 | 13.40 | 项目例会 40 | 1d | 2002-10-04 08:00 | 2002-10-04 17:00 |  | 2002-10-04 08:00 | 2002-10-04 17:00 | 1d | 11d |  | start no earlier than 2002-10-04 08:00 |  |  |
| 167 | 13.41 | 项目例会 41 | 1d | 2002-10-11 08:00 | 2002-10-11 17:00 |  | 2002-10-11 08:00 | 2002-10-11 17:00 | 1d | 6d |  | start no earlier than 2002-10-11 08:00 |  |  |

| ID | WBS | Task | Duration | Start | Finish | Baseline start | Baseline finish | Baseline duration | Total slack | Constraint | Resources | Work |
| --- | --- | --- | --- | --- | --- | --- | --- | --- | --- | --- | --- | --- |
| 169 | 14 | **项目管理工作** | 200.5d | 2002-01-04 08:00 | 2002-10-18 12:00 | 2002-01-04 08:00 | 2002-10-18 12:00 | 200.5d | 1.5d |  | 项目经理 | 1604h |
| 170 | 14.1 | 项目管理工作 1 | 0.5d | 2002-01-04 08:00 | 2002-01-04 12:00 | 2002-01-04 08:00 | 2002-01-04 12:00 | 0.5d | 201.5d | start no earlier than 2002-01-04 08:00 |  |  |
| 171 | 14.2 | 项目管理工作 2 | 0.5d | 2002-01-11 08:00 | 2002-01-11 12:00 | 2002-01-11 08:00 | 2002-01-11 12:00 | 0.5d | 196.5d | start no earlier than 2002-01-11 08:00 |  |  |
| 172 | 14.3 | 项目管理工作 3 | 0.5d | 2002-01-18 08:00 | 2002-01-18 12:00 | 2002-01-18 08:00 | 2002-01-18 12:00 | 0.5d | 191.5d | start no earlier than 2002-01-18 08:00 |  |  |
| 173 | 14.4 | 项目管理工作 4 | 0.5d | 2002-01-25 08:00 | 2002-01-25 12:00 | 2002-01-25 08:00 | 2002-01-25 12:00 | 0.5d | 186.5d | start no earlier than 2002-01-25 08:00 |  |  |
| 174 | 14.5 | 项目管理工作 5 | 0.5d | 2002-02-01 08:00 | 2002-02-01 12:00 | 2002-02-01 08:00 | 2002-02-01 12:00 | 0.5d | 181.5d | start no earlier than 2002-02-01 08:00 |  |  |
| 175 | 14.6 | 项目管理工作 6 | 0.5d | 2002-02-08 08:00 | 2002-02-08 12:00 | 2002-02-08 08:00 | 2002-02-08 12:00 | 0.5d | 176.5d | start no earlier than 2002-02-08 08:00 |  |  |
| 176 | 14.7 | 项目管理工作 7 | 0.5d | 2002-02-22 08:00 | 2002-02-22 12:00 | 2002-02-22 08:00 | 2002-02-22 12:00 | 0.5d | 171.5d | start no earlier than 2002-02-22 08:00 |  |  |
| 177 | 14.8 | 项目管理工作 8 | 0.5d | 2002-03-01 08:00 | 2002-03-01 12:00 | 2002-03-01 08:00 | 2002-03-01 12:00 | 0.5d | 166.5d | start no earlier than 2002-03-01 08:00 |  |  |
| 178 | 14.9 | 项目管理工作 9 | 0.5d | 2002-03-08 08:00 | 2002-03-08 12:00 | 2002-03-08 08:00 | 2002-03-08 12:00 | 0.5d | 161.5d | start no earlier than 2002-03-08 08:00 |  |  |
| 179 | 14.10 | 项目管理工作 10 | 0.5d | 2002-03-15 08:00 | 2002-03-15 12:00 | 2002-03-15 08:00 | 2002-03-15 12:00 | 0.5d | 156.5d | start no earlier than 2002-03-15 08:00 |  |  |
| 180 | 14.11 | 项目管理工作 11 | 0.5d | 2002-03-22 08:00 | 2002-03-22 12:00 | 2002-03-22 08:00 | 2002-03-22 12:00 | 0.5d | 151.5d | start no earlier than 2002-03-22 08:00 |  |  |
| 181 | 14.12 | 项目管理工作 12 | 0.5d | 2002-03-29 08:00 | 2002-03-29 12:00 | 2002-03-29 08:00 | 2002-03-29 12:00 | 0.5d | 146.5d | start no earlier than 2002-03-29 08:00 |  |  |
| 182 | 14.13 | 项目管理工作 13 | 0.5d | 2002-04-05 08:00 | 2002-04-05 12:00 | 2002-04-05 08:00 | 2002-04-05 12:00 | 0.5d | 141.5d | start no earlier than 2002-04-05 08:00 |  |  |
| 183 | 14.14 | 项目管理工作 14 | 0.5d | 2002-04-12 08:00 | 2002-04-12 12:00 | 2002-04-12 08:00 | 2002-04-12 12:00 | 0.5d | 136.5d | start no earlier than 2002-04-12 08:00 |  |  |
| 184 | 14.15 | 项目管理工作 15 | 0.5d | 2002-04-19 08:00 | 2002-04-19 12:00 | 2002-04-19 08:00 | 2002-04-19 12:00 | 0.5d | 131.5d | start no earlier than 2002-04-19 08:00 |  |  |
| 185 | 14.16 | 项目管理工作 16 | 0.5d | 2002-04-26 08:00 | 2002-04-26 12:00 | 2002-04-26 08:00 | 2002-04-26 12:00 | 0.5d | 126.5d | start no earlier than 2002-04-26 08:00 |  |  |
| 186 | 14.17 | 项目管理工作 17 | 0.5d | 2002-05-03 08:00 | 2002-05-03 12:00 | 2002-05-03 08:00 | 2002-05-03 12:00 | 0.5d | 121.5d | start no earlier than 2002-05-03 08:00 |  |  |
| 187 | 14.18 | 项目管理工作 18 | 0.5d | 2002-05-10 08:00 | 2002-05-10 12:00 | 2002-05-10 08:00 | 2002-05-10 12:00 | 0.5d | 116.5d | start no earlier than 2002-05-10 08:00 |  |  |
| 188 | 14.19 | 项目管理工作 19 | 0.5d | 2002-05-17 08:00 | 2002-05-17 12:00 | 2002-05-17 08:00 | 2002-05-17 12:00 | 0.5d | 111.5d | start no earlier than 2002-05-17 08:00 |  |  |
| 189 | 14.20 | 项目管理工作 20 | 0.5d | 2002-05-24 08:00 | 2002-05-24 12:00 | 2002-05-24 08:00 | 2002-05-24 12:00 | 0.5d | 106.5d | start no earlier than 2002-05-24 08:00 |  |  |
| 190 | 14.21 | 项目管理工作 21 | 0.5d | 2002-05-31 08:00 | 2002-05-31 12:00 | 2002-05-31 08:00 | 2002-05-31 12:00 | 0.5d | 101.5d | start no earlier than 2002-05-31 08:00 |  |  |
| 191 | 14.22 | 项目管理工作 22 | 0.5d | 2002-06-07 08:00 | 2002-06-07 12:00 | 2002-06-07 08:00 | 2002-06-07 12:00 | 0.5d | 96.5d | start no earlier than 2002-06-07 08:00 |  |  |
| 192 | 14.23 | 项目管理工作 23 | 0.5d | 2002-06-14 08:00 | 2002-06-14 12:00 | 2002-06-14 08:00 | 2002-06-14 12:00 | 0.5d | 91.5d | start no earlier than 2002-06-14 08:00 |  |  |
| 193 | 14.24 | 项目管理工作 24 | 0.5d | 2002-06-21 08:00 | 2002-06-21 12:00 | 2002-06-21 08:00 | 2002-06-21 12:00 | 0.5d | 86.5d | start no earlier than 2002-06-21 08:00 |  |  |
| 194 | 14.25 | 项目管理工作 25 | 0.5d | 2002-06-28 08:00 | 2002-06-28 12:00 | 2002-06-28 08:00 | 2002-06-28 12:00 | 0.5d | 81.5d | start no earlier than 2002-06-28 08:00 |  |  |
| 195 | 14.26 | 项目管理工作 26 | 0.5d | 2002-07-05 08:00 | 2002-07-05 12:00 | 2002-07-05 08:00 | 2002-07-05 12:00 | 0.5d | 76.5d | start no earlier than 2002-07-05 08:00 |  |  |
| 196 | 14.27 | 项目管理工作 27 | 0.5d | 2002-07-12 08:00 | 2002-07-12 12:00 | 2002-07-12 08:00 | 2002-07-12 12:00 | 0.5d | 71.5d | start no earlier than 2002-07-12 08:00 |  |  |
| 197 | 14.28 | 项目管理工作 28 | 0.5d | 2002-07-19 08:00 | 2002-07-19 12:00 | 2002-07-19 08:00 | 2002-07-19 12:00 | 0.5d | 66.5d | start no earlier than 2002-07-19 08:00 |  |  |
| 198 | 14.29 | 项目管理工作 29 | 0.5d | 2002-07-26 08:00 | 2002-07-26 12:00 | 2002-07-26 08:00 | 2002-07-26 12:00 | 0.5d | 61.5d | start no earlier than 2002-07-26 08:00 |  |  |
| 199 | 14.30 | 项目管理工作 30 | 0.5d | 2002-08-02 08:00 | 2002-08-02 12:00 | 2002-08-02 08:00 | 2002-08-02 12:00 | 0.5d | 56.5d | start no earlier than 2002-08-02 08:00 |  |  |
| 200 | 14.31 | 项目管理工作 31 | 0.5d | 2002-08-09 08:00 | 2002-08-09 12:00 | 2002-08-09 08:00 | 2002-08-09 12:00 | 0.5d | 51.5d | start no earlier than 2002-08-09 08:00 |  |  |
| 201 | 14.32 | 项目管理工作 32 | 0.5d | 2002-08-16 08:00 | 2002-08-16 12:00 | 2002-08-16 08:00 | 2002-08-16 12:00 | 0.5d | 46.5d | start no earlier than 2002-08-16 08:00 |  |  |
| 202 | 14.33 | 项目管理工作 33 | 0.5d | 2002-08-23 08:00 | 2002-08-23 12:00 | 2002-08-23 08:00 | 2002-08-23 12:00 | 0.5d | 41.5d | start no earlier than 2002-08-23 08:00 |  |  |
| 203 | 14.34 | 项目管理工作 34 | 0.5d | 2002-08-30 08:00 | 2002-08-30 12:00 | 2002-08-30 08:00 | 2002-08-30 12:00 | 0.5d | 36.5d | start no earlier than 2002-08-30 08:00 |  |  |
| 204 | 14.35 | 项目管理工作 35 | 0.5d | 2002-09-06 08:00 | 2002-09-06 12:00 | 2002-09-06 08:00 | 2002-09-06 12:00 | 0.5d | 31.5d | start no earlier than 2002-09-06 08:00 |  |  |
| 205 | 14.36 | 项目管理工作 36 | 0.5d | 2002-09-13 08:00 | 2002-09-13 12:00 | 2002-09-13 08:00 | 2002-09-13 12:00 | 0.5d | 26.5d | start no earlier than 2002-09-13 08:00 |  |  |
| 206 | 14.37 | 项目管理工作 37 | 0.5d | 2002-09-20 08:00 | 2002-09-20 12:00 | 2002-09-20 08:00 | 2002-09-20 12:00 | 0.5d | 21.5d | start no earlier than 2002-09-20 08:00 |  |  |
| 207 | 14.38 | 项目管理工作 38 | 0.5d | 2002-09-27 08:00 | 2002-09-27 12:00 | 2002-09-27 08:00 | 2002-09-27 12:00 | 0.5d | 16.5d | start no earlier than 2002-09-27 08:00 |  |  |
| 208 | 14.39 | 项目管理工作 39 | 0.5d | 2002-10-04 08:00 | 2002-10-04 12:00 | 2002-10-04 08:00 | 2002-10-04 12:00 | 0.5d | 11.5d | start no earlier than 2002-10-04 08:00 |  |  |
| 209 | 14.40 | 项目管理工作 40 | 0.5d | 2002-10-11 08:00 | 2002-10-11 12:00 | 2002-10-11 08:00 | 2002-10-11 12:00 | 0.5d | 6.5d | start no earlier than 2002-10-11 08:00 |  |  |
| 210 | 14.41 | 项目管理工作 41 | 0.5d | 2002-10-18 08:00 | 2002-10-18 12:00 | 2002-10-18 08:00 | 2002-10-18 12:00 | 0.5d | 1.5d | start no earlier than 2002-10-18 08:00 |  |  |

| ID | WBS | Task | Duration | Start | Finish | Baseline start | Baseline finish | Baseline duration | Total slack | Constraint | Resources | Work |
| --- | --- | --- | --- | --- | --- | --- | --- | --- | --- | --- | --- | --- |
| 212 | 15 | **配置管理工作** | 200.5d | 2002-01-04 08:00 | 2002-10-18 12:00 | 2002-01-04 08:00 | 2002-10-18 12:00 | 200.5d | 1.5d |  | 配置管理员 | 1604h |
| 213 | 15.1 | 配置管理工作 1 | 0.5d | 2002-01-04 08:00 | 2002-01-04 12:00 | 2002-01-04 08:00 | 2002-01-04 12:00 | 0.5d | 201.5d | start no earlier than 2002-01-04 08:00 |  |  |
| 214 | 15.2 | 配置管理工作 2 | 0.5d | 2002-01-11 08:00 | 2002-01-11 12:00 | 2002-01-11 08:00 | 2002-01-11 12:00 | 0.5d | 196.5d | start no earlier than 2002-01-11 08:00 |  |  |
| 215 | 15.3 | 配置管理工作 3 | 0.5d | 2002-01-18 08:00 | 2002-01-18 12:00 | 2002-01-18 08:00 | 2002-01-18 12:00 | 0.5d | 191.5d | start no earlier than 2002-01-18 08:00 |  |  |
| 216 | 15.4 | 配置管理工作 4 | 0.5d | 2002-01-25 08:00 | 2002-01-25 12:00 | 2002-01-25 08:00 | 2002-01-25 12:00 | 0.5d | 186.5d | start no earlier than 2002-01-25 08:00 |  |  |
| 217 | 15.5 | 配置管理工作 5 | 0.5d | 2002-02-01 08:00 | 2002-02-01 12:00 | 2002-02-01 08:00 | 2002-02-01 12:00 | 0.5d | 181.5d | start no earlier than 2002-02-01 08:00 |  |  |
| 218 | 15.6 | 配置管理工作 6 | 0.5d | 2002-02-08 08:00 | 2002-02-08 12:00 | 2002-02-08 08:00 | 2002-02-08 12:00 | 0.5d | 176.5d | start no earlier than 2002-02-08 08:00 |  |  |
| 219 | 15.7 | 配置管理工作 7 | 0.5d | 2002-02-22 08:00 | 2002-02-22 12:00 | 2002-02-22 08:00 | 2002-02-22 12:00 | 0.5d | 171.5d | start no earlier than 2002-02-22 08:00 |  |  |
| 220 | 15.8 | 配置管理工作 8 | 0.5d | 2002-03-01 08:00 | 2002-03-01 12:00 | 2002-03-01 08:00 | 2002-03-01 12:00 | 0.5d | 166.5d | start no earlier than 2002-03-01 08:00 |  |  |
| 221 | 15.9 | 配置管理工作 9 | 0.5d | 2002-03-08 08:00 | 2002-03-08 12:00 | 2002-03-08 08:00 | 2002-03-08 12:00 | 0.5d | 161.5d | start no earlier than 2002-03-08 08:00 |  |  |
| 222 | 15.10 | 配置管理工作 10 | 0.5d | 2002-03-15 08:00 | 2002-03-15 12:00 | 2002-03-15 08:00 | 2002-03-15 12:00 | 0.5d | 156.5d | start no earlier than 2002-03-15 08:00 |  |  |
| 223 | 15.11 | 配置管理工作 11 | 0.5d | 2002-03-22 08:00 | 2002-03-22 12:00 | 2002-03-22 08:00 | 2002-03-22 12:00 | 0.5d | 151.5d | start no earlier than 2002-03-22 08:00 |  |  |
| 224 | 15.12 | 配置管理工作 12 | 0.5d | 2002-03-29 08:00 | 2002-03-29 12:00 | 2002-03-29 08:00 | 2002-03-29 12:00 | 0.5d | 146.5d | start no earlier than 2002-03-29 08:00 |  |  |
| 225 | 15.13 | 配置管理工作 13 | 0.5d | 2002-04-05 08:00 | 2002-04-05 12:00 | 2002-04-05 08:00 | 2002-04-05 12:00 | 0.5d | 141.5d | start no earlier than 2002-04-05 08:00 |  |  |
| 226 | 15.14 | 配置管理工作 14 | 0.5d | 2002-04-12 08:00 | 2002-04-12 12:00 | 2002-04-12 08:00 | 2002-04-12 12:00 | 0.5d | 136.5d | start no earlier than 2002-04-12 08:00 |  |  |
| 227 | 15.15 | 配置管理工作 15 | 0.5d | 2002-04-19 08:00 | 2002-04-19 12:00 | 2002-04-19 08:00 | 2002-04-19 12:00 | 0.5d | 131.5d | start no earlier than 2002-04-19 08:00 |  |  |
| 228 | 15.16 | 配置管理工作 16 | 0.5d | 2002-04-26 08:00 | 2002-04-26 12:00 | 2002-04-26 08:00 | 2002-04-26 12:00 | 0.5d | 126.5d | start no earlier than 2002-04-26 08:00 |  |  |
| 229 | 15.17 | 配置管理工作 17 | 0.5d | 2002-05-03 08:00 | 2002-05-03 12:00 | 2002-05-03 08:00 | 2002-05-03 12:00 | 0.5d | 121.5d | start no earlier than 2002-05-03 08:00 |  |  |
| 230 | 15.18 | 配置管理工作 18 | 0.5d | 2002-05-10 08:00 | 2002-05-10 12:00 | 2002-05-10 08:00 | 2002-05-10 12:00 | 0.5d | 116.5d | start no earlier than 2002-05-10 08:00 |  |  |
| 231 | 15.19 | 配置管理工作 19 | 0.5d | 2002-05-17 08:00 | 2002-05-17 12:00 | 2002-05-17 08:00 | 2002-05-17 12:00 | 0.5d | 111.5d | start no earlier than 2002-05-17 08:00 |  |  |
| 232 | 15.20 | 配置管理工作 20 | 0.5d | 2002-05-24 08:00 | 2002-05-24 12:00 | 2002-05-24 08:00 | 2002-05-24 12:00 | 0.5d | 106.5d | start no earlier than 2002-05-24 08:00 |  |  |
| 233 | 15.21 | 配置管理工作 21 | 0.5d | 2002-05-31 08:00 | 2002-05-31 12:00 | 2002-05-31 08:00 | 2002-05-31 12:00 | 0.5d | 101.5d | start no earlier than 2002-05-31 08:00 |  |  |
| 234 | 15.22 | 配置管理工作 22 | 0.5d | 2002-06-07 08:00 | 2002-06-07 12:00 | 2002-06-07 08:00 | 2002-06-07 12:00 | 0.5d | 96.5d | start no earlier than 2002-06-07 08:00 |  |  |
| 235 | 15.23 | 配置管理工作 23 | 0.5d | 2002-06-14 08:00 | 2002-06-14 12:00 | 2002-06-14 08:00 | 2002-06-14 12:00 | 0.5d | 91.5d | start no earlier than 2002-06-14 08:00 |  |  |
| 236 | 15.24 | 配置管理工作 24 | 0.5d | 2002-06-21 08:00 | 2002-06-21 12:00 | 2002-06-21 08:00 | 2002-06-21 12:00 | 0.5d | 86.5d | start no earlier than 2002-06-21 08:00 |  |  |
| 237 | 15.25 | 配置管理工作 25 | 0.5d | 2002-06-28 08:00 | 2002-06-28 12:00 | 2002-06-28 08:00 | 2002-06-28 12:00 | 0.5d | 81.5d | start no earlier than 2002-06-28 08:00 |  |  |
| 238 | 15.26 | 配置管理工作 26 | 0.5d | 2002-07-05 08:00 | 2002-07-05 12:00 | 2002-07-05 08:00 | 2002-07-05 12:00 | 0.5d | 76.5d | start no earlier than 2002-07-05 08:00 |  |  |
| 239 | 15.27 | 配置管理工作 27 | 0.5d | 2002-07-12 08:00 | 2002-07-12 12:00 | 2002-07-12 08:00 | 2002-07-12 12:00 | 0.5d | 71.5d | start no earlier than 2002-07-12 08:00 |  |  |
| 240 | 15.28 | 配置管理工作 28 | 0.5d | 2002-07-19 08:00 | 2002-07-19 12:00 | 2002-07-19 08:00 | 2002-07-19 12:00 | 0.5d | 66.5d | start no earlier than 2002-07-19 08:00 |  |  |
| 241 | 15.29 | 配置管理工作 29 | 0.5d | 2002-07-26 08:00 | 2002-07-26 12:00 | 2002-07-26 08:00 | 2002-07-26 12:00 | 0.5d | 61.5d | start no earlier than 2002-07-26 08:00 |  |  |
| 242 | 15.30 | 配置管理工作 30 | 0.5d | 2002-08-02 08:00 | 2002-08-02 12:00 | 2002-08-02 08:00 | 2002-08-02 12:00 | 0.5d | 56.5d | start no earlier than 2002-08-02 08:00 |  |  |
| 243 | 15.31 | 配置管理工作 31 | 0.5d | 2002-08-09 08:00 | 2002-08-09 12:00 | 2002-08-09 08:00 | 2002-08-09 12:00 | 0.5d | 51.5d | start no earlier than 2002-08-09 08:00 |  |  |
| 244 | 15.32 | 配置管理工作 32 | 0.5d | 2002-08-16 08:00 | 2002-08-16 12:00 | 2002-08-16 08:00 | 2002-08-16 12:00 | 0.5d | 46.5d | start no earlier than 2002-08-16 08:00 |  |  |
| 245 | 15.33 | 配置管理工作 33 | 0.5d | 2002-08-23 08:00 | 2002-08-23 12:00 | 2002-08-23 08:00 | 2002-08-23 12:00 | 0.5d | 41.5d | start no earlier than 2002-08-23 08:00 |  |  |
| 246 | 15.34 | 配置管理工作 34 | 0.5d | 2002-08-30 08:00 | 2002-08-30 12:00 | 2002-08-30 08:00 | 2002-08-30 12:00 | 0.5d | 36.5d | start no earlier than 2002-08-30 08:00 |  |  |
| 247 | 15.35 | 配置管理工作 35 | 0.5d | 2002-09-06 08:00 | 2002-09-06 12:00 | 2002-09-06 08:00 | 2002-09-06 12:00 | 0.5d | 31.5d | start no earlier than 2002-09-06 08:00 |  |  |
| 248 | 15.36 | 配置管理工作 36 | 0.5d | 2002-09-13 08:00 | 2002-09-13 12:00 | 2002-09-13 08:00 | 2002-09-13 12:00 | 0.5d | 26.5d | start no earlier than 2002-09-13 08:00 |  |  |
| 249 | 15.37 | 配置管理工作 37 | 0.5d | 2002-09-20 08:00 | 2002-09-20 12:00 | 2002-09-20 08:00 | 2002-09-20 12:00 | 0.5d | 21.5d | start no earlier than 2002-09-20 08:00 |  |  |
| 250 | 15.38 | 配置管理工作 38 | 0.5d | 2002-09-27 08:00 | 2002-09-27 12:00 | 2002-09-27 08:00 | 2002-09-27 12:00 | 0.5d | 16.5d | start no earlier than 2002-09-27 08:00 |  |  |
| 251 | 15.39 | 配置管理工作 39 | 0.5d | 2002-10-04 08:00 | 2002-10-04 12:00 | 2002-10-04 08:00 | 2002-10-04 12:00 | 0.5d | 11.5d | start no earlier than 2002-10-04 08:00 |  |  |
| 252 | 15.40 | 配置管理工作 40 | 0.5d | 2002-10-11 08:00 | 2002-10-11 12:00 | 2002-10-11 08:00 | 2002-10-11 12:00 | 0.5d | 6.5d | start no earlier than 2002-10-11 08:00 |  |  |
| 253 | 15.41 | 配置管理工作 41 | 0.5d | 2002-10-18 08:00 | 2002-10-18 12:00 | 2002-10-18 08:00 | 2002-10-18 12:00 | 0.5d | 1.5d | start no earlier than 2002-10-18 08:00 |  |  |
